# Tareas

Schedule from MS Project, 2016-09-12 to 2016-12-23, costs in €, A marks actual dates.

## Calendars

- Estándar: Mon-Fri 09:00-13:00, 15:00-19:00; Sat-Sun off.

## Resources

| Resource | Rate |
| --- | --- |
| Jesús | 25 |
| Antonio | 25 |
| Ruben | 25 |
| George | 25 |
| Dani | 25 |
| Sergio | 25 |

## Schedule

| ID | WBS | Task | Type | Duration | Start | Finish | Predecessors | Baseline start | Baseline finish | Baseline duration | Total slack | Free slack | Resources | Work | Cost | Baseline cost |
| --- | --- | --- | --- | --- | --- | --- | --- | --- | --- | --- | --- | --- | --- | --- | --- | --- |
| 2 | 1 | **HITO 0** |  | 27.38d | 2016-09-12 | 2016-10-19 |  | 2016-09-12 | 2016-10-19 | 27.38d | 0d |  |  | 373h | 9,325 | 9,325 |
| 3 | 1.1 | **Iteración 1** |  | 7.12d | 2016-09-12 | 2016-09-21 |  | 2016-09-12 | 2016-09-21 | 7.12d | 0d |  |  | 125h | 3,125 | 3,125 |
| 4 | 1.1.1 | Definir el público objetivo |  | 6h | 2016-09-12 | 2016-09-12 |  | 2016-09-12 | 2016-09-12 | 6h | 0d |  | Antonio | 6h | 150 | 150 |
| 5 | 1.1.2 | Definir los problemas y soluciones de esos usuarios |  | 6h | 2016-09-12 | 2016-09-13 | 4 | 2016-09-12 | 2016-09-13 | 6h | 0d |  | Jesús | 6h | 150 | 150 |
| 6 | 1.1.3 | Deninir métricas |  | 5h | 2016-09-13 | 2016-09-14 | 5 | 2016-09-13 | 2016-09-14 | 5h | 0d |  | George | 5h | 125 | 125 |
| 7 | 1.1.4 | Especificar los costes y los ingresos |  | 1d | 2016-09-14 | 2016-09-15 | 6 | 2016-09-14 | 2016-09-15 | 1d | 0d |  | Ruben | 8h | 200 | 200 |
| 8 | 1.1.5 | Definir los canales |  | 4h | 2016-09-14 | 2016-09-14 | 6 | 2016-09-14 | 2016-09-14 | 4h | 0.5d |  | Dani | 4h | 100 | 100 |
| 9 | 1.1.6 | Rellenar documento de Concepto del proyecto |  | 4d | 2016-09-15 | 2016-09-21 | 6, 7, 8 | 2016-09-15 | 2016-09-21 | 4d | 0d |  | Antonio; George; Jesús | 96h | 2,400 | 2,400 |
| 10 | 1.1.7 | * Entregables Iteración 1: LEAN Canvas y especificación del mismo | milestone | 0d | 2016-09-12 | 2016-09-12 |  | 2016-09-12 | 2016-09-12 |  | 7.12d |  |  |  |  |  |
| 11 | 1.2 | **Iteración 2** |  | 10d | 2016-09-21 | 2016-10-05 | 3 | 2016-09-21 | 2016-10-05 | 10d | 0d |  |  | 106.9h | 2,672.5 | 2,672.5 |
| 12 | 1.2.1 | Definir los tipos de usuarios |  | 4h | 2016-09-21 | 2016-09-21 |  | 2016-09-21 | 2016-09-21 | 4h | 0d |  | Antonio; Jesús | 8h | 200 | 200 |
| 13 | 1.2.2 | Definir las interfaces externas |  | 4h | 2016-09-21 | 2016-09-22 | 12 | 2016-09-21 | 2016-09-22 | 4h | 0d |  | Ruben | 4h | 100 | 100 |
| 14 | 1.2.3 | **Definir los requisitos funcionales** |  | 2.62d | 2016-09-22 | 2016-09-26 | 12, 13 | 2016-09-22 | 2016-09-26 | 2.62d | 0d |  |  | 24h | 600 | 600 |
| 15 | 1.2.3.1 | De usuario invitado |  | 2h | 2016-09-22 | 2016-09-22 |  | 2016-09-22 | 2016-09-22 | 2h | 0d |  | Antonio | 2h | 50 | 50 |
| 16 | 1.2.3.2 | De usuario registrado free |  | 6h | 2016-09-22 | 2016-09-23 | 15 | 2016-09-22 | 2016-09-23 | 6h | 0d |  | Jesús | 6h | 150 | 150 |
| 17 | 1.2.3.3 | De usuario registrado premium |  | 6h | 2016-09-23 | 2016-09-23 | 16 | 2016-09-23 | 2016-09-23 | 6h | 0d |  | George | 6h | 150 | 150 |
| 18 | 1.2.3.4 | Del usuario profesor |  | 4h | 2016-09-23 | 2016-09-26 | 17 | 2016-09-23 | 2016-09-26 | 4h | 0d |  | George | 4h | 100 | 100 |
| 19 | 1.2.3.5 | Del usuario tipo Alumno |  | 3h | 2016-09-26 | 2016-09-26 | 18 | 2016-09-26 | 2016-09-26 | 3h | 0d |  | George | 3h | 75 | 75 |
| 20 | 1.2.3.6 | Del Administrador |  | 3h | 2016-09-23 | 2016-09-26 | 17 | 2016-09-23 | 2016-09-26 | 3h | 0.5d |  | Jesús | 3h | 75 | 75 |
| 21 | 1.2.4 | Elaborar el Presupuesto (hoja de cálculo) |  | 5h | 2016-09-26 | 2016-09-27 | 14 | 2016-09-26 | 2016-09-27 | 5h | 0d |  | George [60%]; Ruben | 8h | 200 | 200 |
| 22 | 1.2.5 | **Requisitos no Funcionales** |  | 3.5d | 2016-09-27 | 2016-09-30 | 21 | 2016-09-27 | 2016-09-30 | 3.5d | 0d |  |  | 28h | 700 | 700 |
| 23 | 1.2.5.1 | Integridad |  | 1d | 2016-09-27 | 2016-09-28 |  | 2016-09-27 | 2016-09-28 | 1d | 0d |  | George | 8h | 200 | 200 |
| 24 | 1.2.5.2 | Fiabilidad |  | 5h | 2016-09-28 | 2016-09-28 | 23 | 2016-09-28 | 2016-09-28 | 5h | 0d |  | Antonio | 5h | 125 | 125 |
| 25 | 1.2.5.3 | Mantenimiento |  | 4h | 2016-09-29 | 2016-09-29 | 24 | 2016-09-29 | 2016-09-29 | 4h | 0d |  | George | 4h | 100 | 100 |
| 26 | 1.2.5.4 | Privacidad |  | 5h | 2016-09-29 | 2016-09-30 | 25 | 2016-09-29 | 2016-09-30 | 5h | 0d |  | Antonio | 5h | 125 | 125 |
| 27 | 1.2.5.5 | Usabilidad y Accesibilidad |  | 3h | 2016-09-30 | 2016-09-30 | 26 | 2016-09-30 | 2016-09-30 | 3h | 0d |  | George | 3h | 75 | 75 |
| 28 | 1.2.5.6 | Autentificación |  | 3h | 2016-09-30 | 2016-09-30 | 27 | 2016-09-30 | 2016-09-30 | 3h | 0d |  | Antonio | 3h | 75 | 75 |
| 29 | 1.2.6 | Definir funcionalidades del sistema(casos de uso) |  | 4h | 2016-09-30 | 2016-10-03 | 22 | 2016-09-30 | 2016-10-03 | 4h | 0d |  | Antonio; George; Jesús | 12h | 300 | 300 |
| 30 | 1.2.7 | Sketch de la infografía |  | 1d | 2016-10-03 | 2016-10-04 | 29 | 2016-10-03 | 2016-10-04 | 1d | 0d |  |  |  |  |  |
| 31 | 1.2.8 | Métricas a utilizar y software del proyecto |  | 6h | 2016-10-04 | 2016-10-05 | 30 | 2016-10-04 | 2016-10-05 | 6h | 0d |  | Antonio; George | 12h | 300 | 300 |
| 32 | 1.2.9 | Especificar API's a utilizar |  | 3h | 2016-09-26 | 2016-09-27 | 14 | 2016-09-26 | 2016-09-27 | 3h | 4.75d | 0d | Jesús | 3h | 75 | 75 |
| 33 | 1.2.10 | Medios de difusión de la plataforma |  | 3h | 2016-09-27 | 2016-09-27 | 32 | 2016-09-27 | 2016-09-27 | 3h | 4.75d | 0d | George [30%] | 0.9h | 22.5 | 22.5 |
| 34 | 1.2.11 | Especificar el tipo de contenido de la web |  | 4h | 2016-09-27 | 2016-09-27 | 33 | 2016-09-27 | 2016-09-27 | 4h | 4.75d | 0d | Antonio | 4h | 100 | 100 |
| 35 | 1.2.12 | Definir los derechos de copyright |  | 3h | 2016-09-28 | 2016-09-28 | 34 | 2016-09-28 | 2016-09-28 | 3h | 4.75d |  | Jesús | 3h | 75 | 75 |
| 36 | 1.2.13 | * Entregables Iteración 2: Documento de Especificación del proyecto + Hoja de cálculo de presupuesto | milestone | 0d | 2016-09-21 | 2016-09-21 |  | 2016-09-21 | 2016-09-21 |  | 10d |  |  |  |  |  |

| ID | WBS | Task | Type | Duration | Start | Finish | Predecessors | Complete | Remaining | Baseline start | Baseline finish | Baseline duration | Total slack | Free slack | Resources | Work | Actual work | Cost | Baseline cost | Actual cost |
| --- | --- | --- | --- | --- | --- | --- | --- | --- | --- | --- | --- | --- | --- | --- | --- | --- | --- | --- | --- | --- |
| 37 | 1.3 | **Iteración 3** |  | 10.25d | 2016-10-05 | 2016-10-19 | 11 |  |  | 2016-10-05 | 2016-10-19 | 10.25d | 0d |  |  | 141.1h |  | 3,527.5 | 3,527.5 |  |
| 38 | 1.3.1 | Observaciones GitHub |  | 1d | 2016-10-05 | 2016-10-06 |  |  |  | 2016-10-05 | 2016-10-06 | 1d | 0d |  | Antonio; George; Jesús | 24h |  | 600 | 600 |  |
| 39 | 1.3.2 | Introducir tareas en el Project |  | 6h | 2016-10-06 | 2016-10-06 | 38 |  |  | 2016-10-06 | 2016-10-06 | 6h | 0d |  | George | 6h |  | 150 | 150 |  |
| 40 | 1.3.3 | Arreglar hoja de presupuestos |  | 6h | 2016-10-06 | 2016-10-07 | 39 |  |  | 2016-10-06 | 2016-10-07 | 6h | 0d |  | Ruben | 6h |  | 150 | 150 |  |
| 41 | 1.3.4 | **Mockups del sistema** |  | 3.75d | 2016-10-07 | 2016-10-13 | 40 |  |  | 2016-10-07 | 2016-10-13 | 3.75d | 0d |  |  | 39h |  | 975 | 975 |  |
| 42 | 1.3.4.1 | Del usuario no registrado |  | 5h | 2016-10-07 | 2016-10-10 |  |  |  | 2016-10-07 | 2016-10-10 | 5h | 0d |  | George [60%] | 3h |  | 75 | 75 |  |
| 43 | 1.3.4.2 | Del usuario registrado Free |  | 11h | 2016-10-10 | 2016-10-11 | 42 |  |  | 2016-10-10 | 2016-10-11 | 11h | 1.75d |  | Antonio | 11h |  | 275 | 275 |  |
| 44 | 1.3.4.3 | Del profesor |  | 11h | 2016-10-10 | 2016-10-11 | 42 |  |  | 2016-10-10 | 2016-10-11 | 11h | 0d |  | George | 11h |  | 275 | 275 |  |
| 45 | 1.3.4.4 | Del usuario Registrado premium |  | 7h | 2016-10-11 | 2016-10-12 | 44 |  |  | 2016-10-11 | 2016-10-12 | 7h | 0d |  | Jesús | 7h |  | 175 | 175 |  |
| 46 | 1.3.4.5 | Del alumno |  | 7h | 2016-10-12 | 2016-10-13 | 45 |  |  | 2016-10-12 | 2016-10-13 | 7h | 0d |  | Jesús | 7h |  | 175 | 175 |  |
| 47 | 1.3.5 | Rectificar todos los fallos del documentos especificados por el profesor |  | 1d | 2016-10-06 | 2016-10-07 | 39 |  |  | 2016-10-06 | 2016-10-07 | 1d | 7.5d |  | Antonio; George [40%]; Jesús | 19.2h |  | 480 | 480 |  |
| 48 | 1.3.6 | Crear diagrama de clases |  | 11h | 2016-10-13 | 2016-10-14 | 41 |  |  | 2016-10-13 | 2016-10-14 | 11h | 0d |  | Antonio [70%] | 7.7h |  | 192.5 | 192.5 |  |
| 49 | 1.3.7 | Arquitectura del Sistema |  | 1d | 2016-10-14 | 2016-10-17 | 48 |  |  | 2016-10-14 | 2016-10-17 | 1d | 0d |  | Antonio | 8h |  | 200 | 200 |  |
| 50 | 1.3.8 | Especificación de elementos y tecnologías de seguridad y autenticación |  | 10h | 2016-10-17 | 2016-10-18 | 49 |  |  | 2016-10-17 | 2016-10-18 | 10h | 0d |  | Antonio; George | 20h |  | 500 | 500 |  |
| 51 | 1.3.9 | Especificación API Rest y del modelo de datos |  | 3h | 2016-10-13 | 2016-10-13 | 41 |  |  | 2016-10-13 | 2016-10-13 | 3h | 3.5d | 0d | Antonio [30%]; George | 3.9h |  | 97.5 | 97.5 |  |
| 52 | 1.3.10 | Instalar Apache |  | 3h | 2016-10-19 | 2016-10-19 | 50 |  |  | 2016-10-19 | 2016-10-19 | 3h | 0d |  | Antonio; George | 6h |  | 150 | 150 |  |
| 53 | 1.3.11 | Instalar MySQL |  | 1h | 2016-10-13 | 2016-10-13 | 51 |  |  | 2016-10-13 | 2016-10-13 | 1h | 3.5d |  | Antonio [30%]; George | 1.3h |  | 32.5 | 32.5 |  |
| 54 | 1.3.12 | *Entregables Iteración 3: Documento final de Especificación y Requisitos, Presupuesto y documento con las tareas Project | milestone | 0d | 2016-10-05 | 2016-10-05 |  |  |  | 2016-10-05 | 2016-10-05 |  | 10.25d |  |  |  |  |  |  |  |
| 55 | 2 | **HITO 1** |  | 47.02d | 2016-10-19 A | 2016-12-23 | 2 | 59% | 19.36d | 2016-10-19 | 2016-12-23 | 47.02d | 0d |  |  | 1710.8h | 1045.3h | 42,770 | 42,670 | 26,132.5 |
| 56 | 2.1 | **Iteración 1** |  | 10.03d | 2016-10-19 A | 2016-11-02 A |  | 100% |  | 2016-10-19 | 2016-11-02 | 10.03d |  |  |  | 323.7h | 323.7h | 8,092.5 | 8,092.5 | 8,092.5 |
| 57 | 2.1.1 | Corregir comentarios Villagra y Berna |  | 5h | 2016-10-19 A | 2016-10-19 A |  | 100% |  | 2016-10-19 | 2016-10-19 | 5h |  |  | Antonio [80%]; George [80%]; Jesús [80%] | 12h | 12h | 300 | 300 | 300 |
| 58 | 2.1.2 | **Detallar plan de iteraciones del mes de noviembre** |  | 1.5d | 2016-10-20 A | 2016-10-21 A | 57 | 100% |  | 2016-10-20 | 2016-10-21 | 1.5d |  |  |  | 9.6h | 9.6h | 240 | 240 | 240 |
| 59 | 2.1.2.1 | Crear Subtareas Project |  | 4h | 2016-10-20 A | 2016-10-20 A |  | 100% |  | 2016-10-20 | 2016-10-20 | 4h |  |  | George [80%] | 3.2h | 3.2h | 80 | 80 | 80 |
| 60 | 2.1.2.2 | Definir procedencias Project |  | 4h | 2016-10-20 A | 2016-10-20 A | 59 | 100% |  | 2016-10-20 | 2016-10-20 | 4h |  |  | George [80%] | 3.2h | 3.2h | 80 | 80 | 80 |
| 61 | 2.1.2.3 | Crear los recursos en Project |  | 4h | 2016-10-21 A | 2016-10-21 A | 60 | 100% |  | 2016-10-21 | 2016-10-21 | 4h |  |  | George [80%] | 3.2h | 3.2h | 80 | 80 | 80 |
| 62 | 2.1.3 | Realizar MOOC LeanCanvas |  | 2d | 2016-10-21 A | 2016-10-25 A | 58 | 100% |  | 2016-10-21 | 2016-10-25 | 2d |  |  | Antonio [80%]; Dani [60%]; Jesús [80%] | 35.2h | 35.2h | 880 | 880 | 880 |

| ID | WBS | Task | Duration | Start | Finish | Predecessors | Complete | Remaining | Baseline start | Baseline finish | Baseline duration | Total slack | Resources | Work | Actual work | Cost | Baseline cost | Actual cost |
| --- | --- | --- | --- | --- | --- | --- | --- | --- | --- | --- | --- | --- | --- | --- | --- | --- | --- | --- |
| 63 | 2.1.4 | **Configuración e instalación de los elementos de Backend y Seguridad** | 2.5d | 2016-10-25 A | 2016-10-27 A | 62 | 100% |  | 2016-10-25 | 2016-10-27 | 2.5d |  |  | 25.6h | 25.6h | 640 | 640 | 640 |
| 64 | 2.1.4.1 | Instalación MySQL | 4h | 2016-10-25 A | 2016-10-25 A |  | 100% |  | 2016-10-25 | 2016-10-25 | 4h |  | Antonio [80%]; George [80%] | 6.4h | 6.4h | 160 | 160 | 160 |
| 65 | 2.1.4.2 | Configuración Apache | 1d | 2016-10-26 A | 2016-10-26 A | 64 | 100% |  | 2016-10-26 | 2016-10-26 | 1d |  | Antonio [80%]; George [80%] | 12.8h | 12.8h | 320 | 320 | 320 |
| 66 | 2.1.4.3 | Crear todas las tablas en la BD | 1d | 2016-10-27 A | 2016-10-27 A | 65 | 100% |  | 2016-10-27 | 2016-10-27 | 1d |  | Antonio [80%] | 6.4h | 6.4h | 160 | 160 | 160 |
| 67 | 2.1.5 | **Identificar los riesgos** | 3.38d | 2016-10-28 A | 2016-11-02 A | 63 | 100% |  | 2016-10-28 | 2016-11-02 | 3.38d |  |  | 72.9h | 72.9h | 1,822.5 | 1,822.5 | 1,822.5 |
| 68 | 2.1.5.1 | De Tecnología | 6h | 2016-10-28 A | 2016-10-28 A |  | 100% |  | 2016-10-28 | 2016-10-28 | 6h |  | Jesús [80%]; Ruben [30%]; Antonio [80%]; George [80%] | 16.2h | 16.2h | 405 | 405 | 405 |
| 69 | 2.1.5.2 | De Personas | 4h | 2016-10-28 A | 2016-10-31 A | 68 | 100% |  | 2016-10-28 | 2016-10-31 | 4h |  | George [80%]; Jesús [80%]; Ruben [30%]; Antonio [80%] | 10.8h | 10.8h | 270 | 270 | 270 |
| 70 | 2.1.5.3 | Organizacional | 4h | 2016-10-31 A | 2016-10-31 A | 69 | 100% |  | 2016-10-31 | 2016-10-31 | 4h |  | Antonio [80%]; George [80%]; Jesús [80%]; Ruben [30%] | 10.8h | 10.8h | 270 | 270 | 270 |
| 71 | 2.1.5.4 | Herramientas | 4h | 2016-10-31 A | 2016-11-01 A | 70 | 100% |  | 2016-10-31 | 2016-11-01 | 4h |  | Antonio [80%]; George [80%]; Jesús [80%]; Ruben [30%] | 10.8h | 10.8h | 270 | 270 | 270 |
| 72 | 2.1.5.5 | De Requerimientos | 4h | 2016-11-01 A | 2016-11-01 A | 71 | 100% |  | 2016-11-01 | 2016-11-01 | 4h |  | Antonio [80%]; George [80%]; Jesús [80%]; Ruben [30%] | 10.8h | 10.8h | 270 | 270 | 270 |
| 73 | 2.1.5.6 | De Estimación | 5h | 2016-11-01 A | 2016-11-02 A | 72 | 100% |  | 2016-11-01 | 2016-11-02 | 5h |  | Antonio [80%]; George [80%]; Jesús [80%]; Ruben [30%] | 13.5h | 13.5h | 337.5 | 337.5 | 337.5 |
| 74 | 2.1.6 | **Empezar con la animación del logo** | 9.4d | 2016-10-20 A | 2016-11-02 A | 57 | 100% |  | 2016-10-20 | 2016-11-02 | 9.4d |  |  | 104.4h | 104.4h | 2,610 | 2,610 | 2,610 |
| 75 | 2.1.6.1 | Hacer bocetos del logo | 3.5d | 2016-10-20 A | 2016-10-25 A |  | 100% |  | 2016-10-20 | 2016-10-25 | 3.5d |  | Ruben [80%]; Dani [40%] | 33.6h | 33.6h | 840 | 840 | 840 |
| 76 | 2.1.6.2 | Buscar ejemplos de intros | 4d | 2016-10-25 A | 2016-10-31 A | 75 | 100% |  | 2016-10-25 | 2016-10-31 | 4d |  | Ruben [50%]; Dani | 48h | 48h | 1,200 | 1,200 | 1,200 |
| 77 | 2.1.6.3 | Buscar tutoriales de affter efects | 1.9d | 2016-10-31 A | 2016-11-02 A | 76 | 100% |  | 2016-10-31 | 2016-11-02 | 1.9d |  | Ruben [50%]; Dani | 22.8h | 22.8h | 570 | 570 | 570 |
| 78 | 2.1.7 | Registrar tiempos y % de realización de tareas | 9.5d | 2016-10-19 A | 2016-11-01 A |  | 100% |  | 2016-10-19 | 2016-11-01 | 9.5d |  | Antonio [10%]; George [10%]; Jesús [10%]; Ruben [10%] | 30.4h | 30.4h | 760 | 760 | 760 |
| 79 | 2.1.8 | Comparar la planificación prevista con la real de la iteración 1 | 9.5d | 2016-10-19 A | 2016-11-01 A |  | 100% |  | 2016-10-19 | 2016-11-01 | 9.5d |  | Antonio [10%]; George [10%]; Jesús [10%]; Ruben [10%] | 30.4h | 30.4h | 760 | 760 | 760 |
| 80 | 2.1.9 | Confeccionar informe de la iteración 1 | 0.5d | 2016-11-01 A | 2016-11-02 A | 78, 79 | 100% |  | 2016-11-01 | 2016-11-02 | 0.5d |  | Antonio [20%]; George [20%]; Jesús [20%]; Ruben [20%] | 3.2h | 3.2h | 80 | 80 | 80 |
| 81 | 2.2 | **Iteración 2** | 10d | 2016-11-02 A | 2016-11-16 | 56 | 99% | 0.13d | 2016-11-02 | 2016-11-16 | 10d | 0d |  | 348.8h | 342.4h | 8,720 | 8,620 | 8,560 |
| 82 | 2.2.1 | Corregir y rectificar fallos de la iteración anterior | 1d | 2016-11-02 A | 2016-11-03 A |  | 100% |  | 2016-11-02 | 2016-11-03 | 1d |  | Antonio [80%]; George [80%]; Jesús [80%] | 19.2h | 19.2h | 480 | 480 | 480 |
| 83 | 2.2.2 | **Análisis de Riesgos** | 1.75d | 2016-11-03 A | 2016-11-07 A | 82 | 100% |  | 2016-11-03 | 2016-11-07 | 1.75d |  |  | 28.8h | 28.8h | 720 | 560 | 720 |
| 84 | 2.2.2.1 | Prioridades de los riesgos | 6h | 2016-11-03 A | 2016-11-04 A |  | 100% |  | 2016-11-03 | 2016-11-04 | 6h |  | Antonio [80%]; Jesús [80%] | 9.6h | 9.6h | 240 | 240 | 240 |
| 85 | 2.2.2.2 | Planes de contingencias | 1d | 2016-11-04 A | 2016-11-07 A | 84 | 100% |  | 2016-11-04 | 2016-11-07 | 1d |  | Antonio [80%]; George [80%]; Jesús [80%] | 19.2h | 19.2h | 480 | 320 | 480 |
| 86 | 2.2.3 | Instalar los elementos de backend y seguridad | 3d | 2016-11-07 A | 2016-11-10 A | 85 | 100% |  | 2016-11-07 | 2016-11-10 | 3d |  | Antonio [80%]; George [80%] | 38.4h | 38.4h | 960 | 960 | 960 |
| 87 | 2.2.4 | Boceto del diagrama de Flujo de Interfaces | 4h | 2016-11-10 | 2016-11-10 | 86 |  |  | 2016-11-10 | 2016-11-10 | 4h | 3.75d | George [80%]; Jesús [80%] | 6.4h |  | 160 | 160 |  |

| ID | WBS | Task | Duration | Start | Finish | Predecessors | Complete | Remaining | Baseline start | Baseline finish | Baseline duration | Total slack | Free slack | Resources | Work | Actual work | Cost | Baseline cost | Actual cost |
| --- | --- | --- | --- | --- | --- | --- | --- | --- | --- | --- | --- | --- | --- | --- | --- | --- | --- | --- | --- |
| 88 | 2.2.5 | **Trabajar en el posicionamiento web** | 3.38d | 2016-11-10 A | 2016-11-16 A | 87 | 100% |  | 2016-11-10 | 2016-11-16 | 3.38d |  |  |  | 64.8h | 64.8h | 1,620 | 1,620 | 1,620 |
| 89 | 2.2.5.1 | Búsqueda de las palabras clave | 4h | 2016-11-10 A | 2016-11-11 A |  | 100% |  | 2016-11-10 | 2016-11-11 | 4h |  |  | Antonio [80%]; George [80%]; Jesús [80%] | 9.6h | 9.6h | 240 | 240 | 240 |
| 90 | 2.2.5.2 | Definir sinónimos y términos relacionados a esas palabras clave | 4h | 2016-11-11 A | 2016-11-11 A | 89 | 100% |  | 2016-11-11 | 2016-11-11 | 4h |  |  | Antonio [80%]; George [80%]; Jesús [80%] | 9.6h | 9.6h | 240 | 240 | 240 |
| 91 | 2.2.5.3 | Definir técnicas para que la araña de Google visite nuestra wen | 5h | 2016-11-11 A | 2016-11-14 A | 90 | 100% |  | 2016-11-11 | 2016-11-14 | 5h |  |  | Antonio [80%]; George [80%]; Jesús [80%] | 12h | 12h | 300 | 300 | 300 |
| 92 | 2.2.5.4 | Definir técnicas para aumentar la relevancia | 6h | 2016-11-14 A | 2016-11-15 A | 91 | 100% |  | 2016-11-14 | 2016-11-15 | 6h |  |  | Antonio [80%]; George [80%]; Jesús [80%] | 14.4h | 14.4h | 360 | 360 | 360 |
| 93 | 2.2.5.5 | **Aumentar la autoridad web** | 1d | 2016-11-15 A | 2016-11-16 A | 92 | 100% |  | 2016-11-15 | 2016-11-16 | 1d |  |  |  | 19.2h | 19.2h | 480 | 480 | 480 |
| 94 | 2.2.5.5.1 | Mediante Linkbuilding | 4h | 2016-11-15 A | 2016-11-15 A |  | 100% |  | 2016-11-15 | 2016-11-15 | 4h |  |  | Antonio [80%]; George [80%]; Jesús [80%] | 9.6h | 9.6h | 240 | 240 | 240 |
| 95 | 2.2.5.5.2 | Mediante Linkbaiting | 4h | 2016-11-15 A | 2016-11-16 A | 94 | 100% |  | 2016-11-15 | 2016-11-16 | 4h |  |  | Antonio [80%]; George [80%]; Jesús [80%] | 9.6h | 9.6h | 240 | 240 | 240 |
| 96 | 2.2.6 | **Hacer bocetos de la animación del logo** | 9d | 2016-11-02 A | 2016-11-15 A |  | 100% |  | 2016-11-02 | 2016-11-15 | 9d |  |  |  | 129.6h | 129.6h | 3,240 | 3,240 | 3,240 |
| 97 | 2.2.6.1 | Elegir Logo | 1d | 2016-11-02 A | 2016-11-03 A |  | 100% |  | 2016-11-02 | 2016-11-03 | 1d |  |  | Ruben [80%]; Dani | 14.4h | 14.4h | 360 | 360 | 360 |
| 98 | 2.2.6.2 | Hacer composición básica | 4d | 2016-11-03 A | 2016-11-09 A | 97 | 100% |  | 2016-11-03 | 2016-11-09 | 4d |  |  | Ruben [80%]; Dani | 57.6h | 57.6h | 1,440 | 1,440 | 1,440 |
| 99 | 2.2.6.3 | Probar diferentes efectos | 2d | 2016-11-09 A | 2016-11-11 A | 98 | 100% |  | 2016-11-09 | 2016-11-11 | 2d |  |  | Ruben [80%]; Dani | 28.8h | 28.8h | 720 | 720 | 720 |
| 100 | 2.2.6.4 | Pensar cambios y mejoras | 2d | 2016-11-11 A | 2016-11-15 A | 99 | 100% |  | 2016-11-11 | 2016-11-15 | 2d |  |  | Ruben [80%]; Dani | 28.8h | 28.8h | 720 | 720 | 720 |
| 101 | 2.2.7 | Registrar tiempos y % de realización de tareas | 9.5d | 2016-11-02 A | 2016-11-15 A |  | 100% |  | 2016-11-02 | 2016-11-15 | 9.5d |  |  | Jesús [10%]; Antonio [10%]; Ruben [10%]; George [10%] | 30.4h | 30.4h | 760 | 760 | 760 |
| 102 | 2.2.8 | Comparar la planificación prevista con la real de la iteración 2 | 9.5d | 2016-11-02 A | 2016-11-15 A |  | 100% |  | 2016-11-02 | 2016-11-15 | 9.5d |  |  | Jesús [10%]; Antonio [10%]; Ruben [10%]; George [10%] | 30.4h | 30.4h | 760 | 760 | 760 |
| 103 | 2.2.9 | Confeccionar informe de la iteración 2 | 0.5d | 2016-11-15 A | 2016-11-16 A | 102, 101 | 100% |  | 2016-11-15 | 2016-11-16 | 0.5d |  |  | Antonio [20%] | 0.8h | 0.8h | 20 | 80 | 20 |
| 104 | 2.3 | **Iteración 3** | 10d | 2016-11-16 A | 2016-11-30 | 81 | 97% | 0.34d | 2016-11-16 | 2016-11-30 | 10d | 0d |  |  | 396.4h | 379.2h | 9,910 | 9,910 | 9,480 |
| 105 | 2.3.1 | Rellenar las tareas de las iteraciones 3,4 y 5 | 8.8h | 2016-11-16 A | 2016-11-17 A |  | 100% |  | 2016-11-16 | 2016-11-17 | 8.8h |  |  | George | 8.8h | 8.8h | 220 | 220 | 220 |
| 106 | 2.3.2 | Crear informe SDM | 2h | 2016-11-17 A | 2016-11-17 A | 105 | 100% |  | 2016-11-17 | 2016-11-17 | 2h |  |  | George | 2h | 2h | 50 | 50 | 50 |
| 107 | 2.3.3 | Crear PPW presentación | 3h | 2016-11-17 A | 2016-11-18 A | 106 | 100% |  | 2016-11-17 | 2016-11-18 | 3h |  |  | Jesús [40%] | 1.2h | 1.2h | 30 | 30 | 30 |
| 108 | 2.3.4 | Informe del seguimiento | 4h | 2016-11-18 A | 2016-11-18 A | 107 | 100% |  | 2016-11-18 | 2016-11-18 | 4h |  |  | Antonio; George [90%] | 8h | 8h | 200 | 200 | 200 |
| 109 | 2.3.5 | Revisar el diagrama del flujo de interfaces | 4h | 2016-11-18 | 2016-11-21 | 108 |  |  | 2016-11-18 | 2016-11-21 | 4h | 0.5d | 0d |  |  |  |  |  |  |
| 110 | 2.3.6 | **API RESTful** | 2d | 2016-11-21 A | 2016-11-23 | 109 | 75% | 0.5d | 2016-11-21 | 2016-11-23 | 2d | 5.28d |  |  | 19.2h | 14.4h | 480 | 480 | 360 |
| 111 | 2.3.6.1 | Instalar Oauth 2.0 | 4h | 2016-11-21 | 2016-11-21 |  |  |  | 2016-11-21 | 2016-11-21 | 4h | 6.78d |  | George [80%]; Antonio [40%] | 4.8h |  | 120 | 120 |  |
| 112 | 2.3.6.2 | Hacer pruebas de seguridad | 6h | 2016-11-21 A | 2016-11-22 A | 111 | 100% |  | 2016-11-21 | 2016-11-22 | 6h |  |  | George [80%]; Antonio [40%] | 7.2h | 7.2h | 180 | 180 | 180 |
| 113 | 2.3.6.3 | Hacer pruebas de carga | 6h | 2016-11-22 A | 2016-11-23 A | 112 | 100% |  | 2016-11-22 | 2016-11-23 | 6h |  |  | George [80%]; Antonio [40%] | 7.2h | 7.2h | 180 | 180 | 180 |
| 114 | 2.3.7 | Instalar todas las tecnologías de Back-End | 1d | 2016-11-23 A | 2016-11-24 A | 110 | 100% |  | 2016-11-23 | 2016-11-24 | 1d |  |  | Antonio [40%]; George [80%] | 9.6h | 9.6h | 240 | 240 | 240 |
| 115 | 2.3.8 | Prueba Front-End | 4h | 2016-11-24 A | 2016-11-24 A | 114 | 100% |  | 2016-11-24 | 2016-11-24 | 4h |  |  | George [80%]; Antonio [80%] | 6.4h | 6.4h | 160 | 160 | 160 |

| ID | WBS | Task | Duration | Start | Finish | Predecessors | Complete | Remaining | Baseline start | Baseline finish | Baseline duration | Total slack | Free slack | Resources | Work | Actual work | Cost | Baseline cost | Actual cost |
| --- | --- | --- | --- | --- | --- | --- | --- | --- | --- | --- | --- | --- | --- | --- | --- | --- | --- | --- | --- |
| 116 | 2.3.9 | **Definir los APIs** | 2d | 2016-11-24 A | 2016-11-28 A | 115 | 100% |  | 2016-11-24 | 2016-11-28 | 2d |  |  |  | 41.6h | 41.6h | 1,040 | 1,040 | 1,040 |
| 117 | 2.3.9.1 | Propios | 1d | 2016-11-24 A | 2016-11-25 A |  | 100% |  | 2016-11-24 | 2016-11-25 | 1d |  |  | Antonio [80%]; Dani [50%]; Jesús; George [80%] | 24.8h | 24.8h | 620 | 620 | 620 |
| 118 | 2.3.9.2 | De terceros | 1d | 2016-11-25 A | 2016-11-28 A | 117 | 100% |  | 2016-11-25 | 2016-11-28 | 1d |  |  | Dani [50%]; Antonio [80%]; George [80%] | 16.8h | 16.8h | 420 | 420 | 420 |
| 119 | 2.3.10 | Definir la transformación de formato: pdf - Audio | 1d | 2016-11-28 A | 2016-11-29 | 116 | 50% | 0.5d | 2016-11-28 | 2016-11-29 | 1d | 0.78d |  | Dani [50%]; Jesús; Antonio [80%]; George [80%] | 24.8h | 12.4h | 620 | 620 | 310 |
| 120 | 2.3.11 | **Course Builder** | 2.25d | 2016-11-16 A | 2016-11-18 A |  | 100% |  | 2016-11-16 | 2016-11-18 | 2.25d |  |  |  | 42h | 42h | 1,050 | 1,050 | 1,050 |
| 121 | 2.3.11.1 | Instalar máquina virtual | 4h | 2016-11-16 A | 2016-11-16 A |  | 100% |  | 2016-11-16 | 2016-11-16 | 4h |  |  | Dani [50%]; Sergio; Jesús; Antonio | 14h | 14h | 350 | 350 | 350 |
| 122 | 2.3.11.2 | Instalar paquetes CourseBuilder | 4h | 2016-11-16 A | 2016-11-17 A | 121 | 100% |  | 2016-11-16 | 2016-11-17 | 4h |  |  | Dani [50%]; Sergio; Jesús; Antonio | 14h | 14h | 350 | 350 | 350 |
| 123 | 2.3.11.3 | Subir al servidor de Google | 10h | 2016-11-17 A | 2016-11-18 A | 122 | 100% |  | 2016-11-17 | 2016-11-18 | 10h |  |  | Dani [50%]; Sergio; Jesús [40%]; Antonio [40%] | 14h | 14h | 350 | 350 | 350 |
| 124 | 2.3.12 | **Curso MOOClearning(1º)** | 3d | 2016-11-21 A | 2016-11-23 A | 120 | 100% |  | 2016-11-21 | 2016-11-23 | 3d |  |  |  | 64.8h | 64.8h | 1,620 | 1,620 | 1,620 |
| 125 | 2.3.12.1 | Crear la base del curs | 1d | 2016-11-21 A | 2016-11-21 A |  | 100% |  | 2016-11-21 | 2016-11-21 | 1d |  |  | Dani [50%]; Sergio; Antonio [40%]; Jesús [80%] | 21.6h | 21.6h | 540 | 540 | 540 |
| 126 | 2.3.12.2 | Crear las lecciones | 1d | 2016-11-22 A | 2016-11-22 A | 125 | 100% |  | 2016-11-22 | 2016-11-22 | 1d |  |  | Dani [50%]; Sergio; Antonio [40%]; Jesús [80%] | 21.6h | 21.6h | 540 | 540 | 540 |
| 127 | 2.3.12.3 | Crear las unidades | 1d | 2016-11-23 A | 2016-11-23 A | 126 | 100% |  | 2016-11-23 | 2016-11-23 | 1d |  |  | Dani [50%]; Sergio; Antonio [40%]; Jesús [80%] | 21.6h | 21.6h | 540 | 540 | 540 |
| 128 | 2.3.13 | **Acabar animación del logo** | 10d | 2016-11-16 A | 2016-11-30 A |  | 100% |  | 2016-11-16 | 2016-11-30 | 10d |  |  |  | 104h | 104h | 2,600 | 2,600 | 2,600 |
| 129 | 2.3.13.1 | Poner efecto al Logo | 2d | 2016-11-16 A | 2016-11-18 A |  | 100% |  | 2016-11-16 | 2016-11-18 | 2d |  |  | Ruben [80%]; Dani [50%] | 20.8h | 20.8h | 520 | 520 | 520 |
| 130 | 2.3.13.2 | Añadir efectos a la composición | 4d | 2016-11-18 A | 2016-11-24 A | 129 | 100% |  | 2016-11-18 | 2016-11-24 | 4d |  |  | Ruben [80%]; Dani [50%] | 41.6h | 41.6h | 1,040 | 1,040 | 1,040 |
| 131 | 2.3.13.3 | Hacer ajustes de efectos | 2d | 2016-11-24 A | 2016-11-28 A | 130 | 100% |  | 2016-11-24 | 2016-11-28 | 2d |  |  | Ruben [80%]; Dani [50%] | 20.8h | 20.8h | 520 | 520 | 520 |
| 132 | 2.3.13.4 | Rematar animación y exportar | 2d | 2016-11-28 A | 2016-11-30 A | 131 | 100% |  | 2016-11-28 | 2016-11-30 | 2d |  |  | Ruben [80%]; Dani [50%] | 20.8h | 20.8h | 520 | 520 | 520 |
| 133 | 2.3.14 | Registrar tiempos y % de realización de tareas | 9.5d | 2016-11-16 A | 2016-11-29 A |  | 100% |  | 2016-11-16 | 2016-11-29 | 9.5d |  |  | Jesús [10%]; Antonio [10%]; Ruben [10%]; George [10%] | 30.4h | 30.4h | 760 | 760 | 760 |
| 134 | 2.3.15 | Comparar la planificación prevista con la real de la iteración 3 | 9.5d | 2016-11-16 A | 2016-11-29 A |  | 100% |  | 2016-11-16 | 2016-11-29 | 9.5d |  |  | Jesús [10%]; Antonio [10%]; Ruben [10%]; George [10%] | 30.4h | 30.4h | 760 | 760 | 760 |
| 135 | 2.3.16 | Confeccionar informe de la iteración 3 | 0.5d | 2016-11-29 A | 2016-11-30 A | 134, 133 | 100% |  | 2016-11-29 | 2016-11-30 | 0.5d |  |  | Jesús [20%]; George [20%]; Ruben [20%]; Antonio [20%] | 3.2h | 3.2h | 80 | 80 | 80 |
| 136 | 2.4 | **Iteración 4** | 10d | 2016-11-30 | 2016-12-14 | 104 |  |  | 2016-11-30 | 2016-12-14 | 10d | 0d |  |  | 386.4h |  | 9,660 | 9,660 |  |
| 137 | 2.4.1 | **Estimación de costes** | 3d | 2016-11-30 | 2016-12-05 |  |  |  | 2016-11-30 | 2016-12-05 | 3d | 0.25d | 0d |  | 19.2h |  | 480 | 480 |  |
| 138 | 2.4.1.1 | Ley de Parkinson | 6h | 2016-11-30 | 2016-12-01 |  |  |  | 2016-11-30 | 2016-12-01 | 6h | 0.25d | 0d | George [80%] | 4.8h |  | 120 | 120 |  |
| 139 | 2.4.1.2 | Pricing to win | 6h | 2016-12-01 | 2016-12-01 | 138 |  |  | 2016-12-01 | 2016-12-01 | 6h | 0.25d | 0d | Antonio [40%] | 2.4h |  | 60 | 60 |  |
| 140 | 2.4.1.3 | Puntos Objetivo y/o Puntos de Función | 6h | 2016-12-01 | 2016-12-02 | 139 |  |  | 2016-12-01 | 2016-12-02 | 6h | 0.25d | 0d | Jesús [40%] | 2.4h |  | 60 | 60 |  |
| 141 | 2.4.1.4 | Comparación y discución de los valores obtenidos | 6h | 2016-12-02 | 2016-12-05 | 140 |  |  | 2016-12-02 | 2016-12-05 | 6h | 0.25d |  | Antonio [40%]; George [80%]; Jesús [40%] | 9.6h |  | 240 | 240 |  |

| ID | WBS | Task | Duration | Start | Finish | Predecessors | Baseline start | Baseline finish | Baseline duration | Total slack | Free slack | Constraint | Resources | Work | Cost | Baseline cost |
| --- | --- | --- | --- | --- | --- | --- | --- | --- | --- | --- | --- | --- | --- | --- | --- | --- |
| 142 | 2.4.2 | **Pruebas BackEnd** | 3d | 2016-12-05 | 2016-12-08 | 137 | 2016-12-05 | 2016-12-08 | 3d | 0.25d | 0d |  |  | 28.8h | 720 | 720 |
| 143 | 2.4.2.1 | De Seguridad | 1d | 2016-12-05 | 2016-12-06 |  | 2016-12-05 | 2016-12-06 | 1d | 0.25d | 0d |  | Antonio [40%]; George [80%] | 9.6h | 240 | 240 |
| 144 | 2.4.2.2 | De carga | 1d | 2016-12-06 | 2016-12-07 | 143 | 2016-12-06 | 2016-12-07 | 1d | 0.25d | 0d |  | Antonio [40%]; George [80%] | 9.6h | 240 | 240 |
| 145 | 2.4.2.3 | De rendimiento | 1d | 2016-12-07 | 2016-12-08 | 144 | 2016-12-07 | 2016-12-08 | 1d | 0.25d |  |  | Antonio [40%]; George [80%] | 9.6h | 240 | 240 |
| 146 | 2.4.3 | Validar el funcionamiento del BackEnd | 5h | 2016-12-08 | 2016-12-09 | 142 | 2016-12-08 | 2016-12-09 | 5h | 0.25d | 0d |  | Antonio [40%]; George [80%] | 6h | 150 | 150 |
| 147 | 2.4.4 | Delegar autorización Oauth 2.0 | 5h | 2016-12-09 | 2016-12-09 | 146 | 2016-12-09 | 2016-12-09 | 5h | 0.25d | 0d |  | Antonio [40%]; George [80%] | 6h | 150 | 150 |
| 148 | 2.4.5 | Diagrama de flujo de interfaces completado | 1d | 2016-12-09 | 2016-12-12 | 147 | 2016-12-09 | 2016-12-12 | 1d | 0.25d | 0d |  | Antonio [80%]; George [80%]; Jesús [80%] | 19.2h | 480 | 480 |
| 149 | 2.4.6 | **Curso MOOClearning(2º y 3º)** | 6d | 2016-11-30 | 2016-12-08 |  | 2016-11-30 | 2016-12-08 | 6d | 2.75d | 0d |  |  | 105.6h | 2,640 | 2,640 |
| 150 | 2.4.6.1 | Crear la base del curs | 2d | 2016-11-30 | 2016-12-02 |  | 2016-11-30 | 2016-12-02 | 2d | 2.75d | 0d |  | Antonio [40%]; Dani [40%]; Sergio; Jesús [40%] | 35.2h | 880 | 880 |
| 151 | 2.4.6.2 | Crear las lecciones | 2d | 2016-12-02 | 2016-12-06 | 150 | 2016-12-02 | 2016-12-06 | 2d | 2.75d | 0d |  | Antonio [40%]; Dani [40%]; Sergio; Jesús [40%] | 35.2h | 880 | 880 |
| 152 | 2.4.6.3 | Crear las unidades | 2d | 2016-12-06 | 2016-12-08 | 151 | 2016-12-06 | 2016-12-08 | 2d | 2.75d |  |  | Antonio [40%]; Dani [40%]; Sergio; Jesús [40%] | 35.2h | 880 | 880 |
| 153 | 2.4.7 | Preparar presentación de los MOOClearning | 10h | 2016-12-08 | 2016-12-09 | 149 | 2016-12-08 | 2016-12-09 | 10h | 2.75d |  |  | Antonio [40%]; Dani [40%]; Sergio; Jesús [40%] | 11.2h | 280 | 280 |
| 154 | 2.4.8 | Conversor PDF-MP3 | 7d | 2016-12-01 | 2016-12-09 |  | 2016-12-01 | 2016-12-09 | 7d | 2.4d |  | start no earlier than 2016-12-01 | Dani [20%] | 11.2h | 280 | 280 |
| 155 | 2.4.9 | Revisar y completar tareas restantes el hito | 1.5d | 2016-12-12 | 2016-12-14 | 148 | 2016-12-12 | 2016-12-14 | 1.5d | 0.25d |  |  | Antonio [80%]; George [80%]; Jesús [80%] | 28.8h | 720 | 720 |
| 156 | 2.4.10 | **Comenzar con video promocional** | 9d | 2016-11-30 | 2016-12-13 |  | 2016-11-30 | 2016-12-13 | 9d | 1d |  |  |  | 86.4h | 2,160 | 2,160 |
| 157 | 2.4.10.1 | Establecer idea inicial | 1d | 2016-11-30 | 2016-12-01 |  | 2016-11-30 | 2016-12-01 | 1d | 1d | 0d |  | Ruben [80%]; Dani [40%] | 9.6h | 240 | 240 |
| 158 | 2.4.10.2 | Hacer composición de tomas y escenas | 4d | 2016-12-01 | 2016-12-07 | 157 | 2016-12-01 | 2016-12-07 | 4d | 1d | 0d |  | Ruben [80%]; Dani [40%] | 38.4h | 960 | 960 |
| 159 | 2.4.10.3 | Probar diferentes transiciones entre escenas | 2d | 2016-12-07 | 2016-12-09 | 158 | 2016-12-07 | 2016-12-09 | 2d | 1d | 0d |  | Ruben [80%]; Dani [40%] | 19.2h | 480 | 480 |
| 160 | 2.4.10.4 | Pensar cambios y mejoras | 2d | 2016-12-09 | 2016-12-13 | 159 | 2016-12-09 | 2016-12-13 | 2d | 1d |  |  | Ruben [80%]; Dani [40%] | 19.2h | 480 | 480 |
| 161 | 2.4.11 | Registrar tiempos y % de realización de tareas | 9.5d | 2016-11-30 | 2016-12-13 |  | 2016-11-30 | 2016-12-13 | 9.5d | 0d |  |  | Jesús [10%]; Antonio [10%]; Ruben [10%]; George [10%] | 30.4h | 760 | 760 |
| 162 | 2.4.12 | Comparar la planificación prevista con la real de la iteración 4 | 9.5d | 2016-11-30 | 2016-12-13 |  | 2016-11-30 | 2016-12-13 | 9.5d | 0d |  |  | Jesús [10%]; Antonio [10%]; Ruben [10%]; George [10%] | 30.4h | 760 | 760 |
| 163 | 2.4.13 | Confeccionar informe de la iteración 4 | 0.5d | 2016-12-13 | 2016-12-14 | 162, 161 | 2016-12-13 | 2016-12-14 | 0.5d | 0d |  |  | Jesús [20%]; George [20%]; Ruben [20%]; Antonio [20%] | 3.2h | 80 | 80 |
| 164 | 2.5 | **Iteración 5** | 7d | 2016-12-14 | 2016-12-23 | 136 | 2016-12-14 | 2016-12-23 | 7d | 0d |  |  |  | 255.5h | 6,387.5 | 6,387.5 |
| 165 | 2.5.1 | **Agenda del proyecto** | 1.12d | 2016-12-14 | 2016-12-15 |  | 2016-12-14 | 2016-12-15 | 1.12d | 0.25d | 0d |  |  | 3.6h | 90 | 90 |
| 166 | 2.5.1.1 | Relación de actividades(WBS) | 4h | 2016-12-14 | 2016-12-14 |  | 2016-12-14 | 2016-12-14 | 4h | 0.25d | 0d |  | Antonio [40%] | 1.6h | 40 | 40 |
| 167 | 2.5.1.2 | Plan general del proyecto(Hitos) | 5h | 2016-12-14 | 2016-12-15 | 166 | 2016-12-14 | 2016-12-15 | 5h | 0.25d |  |  | Jesús [40%] | 2h | 50 | 50 |
| 168 | 2.5.2 | Aplicar el modelo EVA en el proyecto | 1d | 2016-12-15 | 2016-12-16 | 165 | 2016-12-15 | 2016-12-16 | 1d | 0.25d | 0d |  | George [80%] | 6.4h | 160 | 160 |
| 169 | 2.5.3 | Terminar el documento de planificación | 3h | 2016-12-16 | 2016-12-16 | 168 | 2016-12-16 | 2016-12-16 | 3h | 0.25d | 0d |  | Jesús | 3h | 75 | 75 |
| 170 | 2.5.4 | Confeccionar el informe completo de iteraciones del Hito 1 | 6h | 2016-12-16 | 2016-12-19 | 169 | 2016-12-16 | 2016-12-19 | 6h | 0.25d | 0d |  | Antonio [40%]; George [40%]; Jesús [80%] | 9.6h | 240 | 240 |
| 171 | 2.5.5 | Crear el informe final de seguimiento | 5h | 2016-12-16 | 2016-12-19 | 169 | 2016-12-16 | 2016-12-19 | 5h | 3.88d |  |  | Antonio [40%]; George [40%] | 4h | 100 | 100 |

| ID | WBS | Task | Type | Duration | Start | Finish | Predecessors | Baseline start | Baseline finish | Baseline duration | Total slack | Free slack | Resources | Work | Cost | Baseline cost |
| --- | --- | --- | --- | --- | --- | --- | --- | --- | --- | --- | --- | --- | --- | --- | --- | --- |
| 172 | 2.5.6 | **Curso MOOClearning(4º)** |  | 1.88d | 2016-12-14 | 2016-12-16 |  | 2016-12-14 | 2016-12-16 | 1.88d | 5.12d |  |  | 38.5h | 962.5 | 962.5 |
| 173 | 2.5.6.1 | Crear la base del curso |  | 5h | 2016-12-14 | 2016-12-15 |  | 2016-12-14 | 2016-12-15 | 5h | 5.12d | 0d | Antonio [40%]; Dani [50%]; Jesús [40%]; Sergio | 11.5h | 287.5 | 287.5 |
| 174 | 2.5.6.2 | Crear las lecciones |  | 5h | 2016-12-15 | 2016-12-15 | 173 | 2016-12-15 | 2016-12-15 | 5h | 5.12d | 0d | Antonio [40%]; Dani [50%]; Jesús [40%]; Sergio | 11.5h | 287.5 | 287.5 |
| 175 | 2.5.6.3 | Crear las unidades |  | 5h | 2016-12-15 | 2016-12-16 | 174 | 2016-12-15 | 2016-12-16 | 5h | 5.12d |  | Antonio [80%]; Dani [50%]; Jesús [80%]; Sergio | 15.5h | 387.5 | 387.5 |
| 176 | 2.5.7 | Revisar y preparar todos los entregables para la entrega |  | 3.5d | 2016-12-19 | 2016-12-23 | 170, 171 | 2016-12-19 | 2016-12-23 | 3.5d | 0.25d |  | Antonio [80%]; George [80%]; Jesús [80%] | 67.2h | 1,680 | 1,680 |
| 177 | 2.5.8 | **Video promocional** |  | 6d | 2016-12-14 | 2016-12-22 |  | 2016-12-14 | 2016-12-22 | 6d | 1d |  |  | 78.4h | 1,960 | 1,960 |
| 178 | 2.5.8.1 | Probar mejoras |  | 2d | 2016-12-14 | 2016-12-16 |  | 2016-12-14 | 2016-12-16 | 2d | 1d | 0d | Ruben [80%]; Dani [50%] | 20.8h | 520 | 520 |
| 179 | 2.5.8.2 | Añadir efectos |  | 2d | 2016-12-16 | 2016-12-20 | 178 | 2016-12-16 | 2016-12-20 | 2d | 1d | 0d | Ruben [80%]; Dani | 28.8h | 720 | 720 |
| 180 | 2.5.8.3 | Añadir capa de ajuste |  | 2d | 2016-12-20 | 2016-12-22 | 179 | 2016-12-20 | 2016-12-22 | 2d | 1d |  | Ruben [80%]; Dani | 28.8h | 720 | 720 |
| 181 | 2.5.9 | Registrar tiempos y % de realización de tareas |  | 6.5d | 2016-12-14 | 2016-12-22 |  | 2016-12-14 | 2016-12-22 | 6.5d | 0d |  | Jesús [10%]; Antonio [10%]; Ruben [10%]; George [10%] | 20.8h | 520 | 520 |
| 182 | 2.5.10 | Comparar la planificación prevista con la real de la iteración 5 |  | 6.5d | 2016-12-14 | 2016-12-22 |  | 2016-12-14 | 2016-12-22 | 6.5d | 0d |  | Jesús [10%]; Antonio [10%]; Ruben [10%]; George [10%] | 20.8h | 520 | 520 |
| 183 | 2.5.11 | Confeccionar informe de la iteración 5 |  | 0.5d | 2016-12-22 | 2016-12-23 | 181, 182 | 2016-12-22 | 2016-12-23 | 0.5d | 0d |  | Jesús [20%]; George [20%]; Ruben [20%]; Antonio [20%] | 3.2h | 80 | 80 |
| 184 | 2.6 | *Entregables: informe de seguimiento[SMBI],informe de iteraciones[PM] , documento planificación [PM], diagrama de flujo de interfaces[SMA], logo[PD],cartel[PD],animacion logo[PD],cursos MOOClearning[elearn] | milestone | 0d | 2016-12-23 | 2016-12-23 | 164 | 2016-12-23 | 2016-12-23 |  | 0d |  |  |  |  |  |
| 186 | 3 | **Colores de las asignaturas** |  | 0d | 2016-09-12 | 2016-09-12 |  | 2016-09-12 | 2016-09-12 |  |  |  |  |  |  |  |
| 187 | 3.1 | Proyecto Multimedia | milestone | 0d | 2016-09-12 | 2016-09-12 |  | 2016-09-12 | 2016-09-12 |  | 74.4d |  |  |  |  |  |
| 188 | 3.2 | Sistemas de Difusion Multimedia | milestone | 0d | 2016-09-12 | 2016-09-12 |  | 2016-09-12 | 2016-09-12 |  | 74.4d |  |  |  |  |  |
| 189 | 3.3 | Sistemas Multimedia Basados en Internet | milestone | 0d | 2016-09-12 | 2016-09-12 |  | 2016-09-12 | 2016-09-12 |  | 74.4d |  |  |  |  |  |
| 190 | 3.4 | E- Learning | milestone | 0d | 2016-09-12 | 2016-09-12 |  | 2016-09-12 | 2016-09-12 |  | 74.4d |  |  |  |  |  |
| 191 | 3.5 | Sistemas Multimedia Avanzados | milestone | 0d | 2016-09-12 | 2016-09-12 |  | 2016-09-12 | 2016-09-12 |  | 74.4d |  |  |  |  |  |
| 192 | 3.6 | Postproducción Digital | milestone | 0d | 2016-09-12 | 2016-09-12 |  | 2016-09-12 | 2016-09-12 |  | 74.4d |  |  |  |  |  |
| 193 | 3.7 | Negocios Multimedia | milestone | 0d | 2016-09-12 | 2016-09-12 |  | 2016-09-12 | 2016-09-12 |  | 74.4d |  |  |  |  |  |
